# 项目规划

Schedule from MS Project, 2020-10-15 to 2020-12-18, costs in ¥.
Microsoft

## Calendars

- 标准: Mon-Fri 08:00-12:00, 13:00-17:00; Sat-Sun off.

## Resources

| Resource | Rate |
| --- | --- |
| 项目经理（任锐媛） | 200 |
| UI专家（田春雨） | 100 |
| 需求专家（于喜梅） | 100 |
| 质量专家（梁钰钊） | 100 |
| 设计专家（张杰） | 100 |
| 测试员1（姚元玲） | 40 |
| 测试员2（张硕） | 40 |
| 程序员1（任锐媛） | 45 |
| 程序员2（张硕） | 45 |
| 程序员3（田春雨） | 45 |
| 程序员4（于喜梅） | 45 |
| 程序员5（梁钰钊） | 45 |
| 程序员6（张杰） | 45 |
| 程序员7（姚元玲） | 45 |

## Schedule

| ID | WBS | Task | Type | Duration | Start | Finish | Predecessors | Constraint | Resources | Work | Cost |
| --- | --- | --- | --- | --- | --- | --- | --- | --- | --- | --- | --- |
| 1 | 1 | **启动** |  | 5d | 2020-10-15 | 2020-10-21 |  |  |  | 256h | 26,768 |
| 2 | 1.1 | 组件核心团队 | manual | 3d | 2020-10-15 | 2020-10-17 |  |  | 项目经理（任锐媛）; UI专家（田春雨）; 需求专家（于喜梅）; 质量专家（梁钰钊）; 设计专家（张杰） | 120h | 14,400 |
| 3 | 1.2 | 干系人分析 | manual | 1d | 2020-10-18 | 2020-10-18 |  |  | 项目经理（任锐媛） [51%]; 需求专家（于喜梅） [49%] | 8h | 1,208 |
| 4 | 1.3 | 里程碑计划 | manual | 1d | 2020-10-19 | 2020-10-19 |  |  | 项目经理（任锐媛） | 8h | 1,600 |
| 5 | 1.4 | 制定项目章程 | manual | 1d | 2020-10-20 | 2020-10-20 | 2, 3, 4 |  | 项目经理（任锐媛） | 8h | 1,600 |
| 6 | 1.5 | 项目启动大会 | manual | 1d | 2020-10-21 | 2020-10-21 | 5 |  | 项目经理（任锐媛）; 需求专家（于喜梅）; UI专家（田春雨）; 测试员1（姚元玲）; 测试员2（张硕）; 程序员1（任锐媛）; 程序员2（张硕）; 程序员3（田春雨）; 设计专家（张杰）; 质量专家（梁钰钊）; 程序员4（于喜梅）; 程序员5（梁钰钊）; 程序员6（张杰）; 程序员7（姚元玲） | 112h | 7,960 |
| 7 | 2 | **规划** |  | 13d | 2020-10-22 | 2020-11-07 |  |  |  | 104h | 18,400 |
| 8 | 2.1 | **规划范围** |  | 6d | 2020-10-22 | 2020-10-30 |  |  |  | 40h | 5,600 |
| 9 | 2.1.1 | 制定需求说明书 | manual | 1d | 2020-10-22 | 2020-10-22 | 6 | start no earlier than 2020-10-22 | 需求专家（于喜梅） | 8h | 800 |
| 10 | 2.1.2 | UI界面设计 | manual | 1d | 2020-10-23 | 2020-10-23 | 9 |  | UI专家（田春雨） | 8h | 800 |
| 11 | 2.1.3 | 详细设计说明书 | manual | 1d | 2020-10-24 | 2020-10-24 | 10 |  | 设计专家（张杰） | 8h | 800 |
| 12 | 2.1.4 | 形成范围基准 | manual | 2d | 2020-10-25 | 2020-10-26 | 11 |  | 项目经理（任锐媛） | 16h | 3,200 |
| 13 | 2.2 | **规划进度** |  | 2d | 2020-10-31 | 2020-11-01 |  |  |  | 16h | 3,200 |
| 14 | 2.2.1 | 制定进度计划 | manual | 1d | 2020-10-31 | 2020-10-31 | 12 |  | 项目经理（任锐媛） | 8h | 1,600 |
| 15 | 2.2.2 | 形成进度基准 | manual | 1d | 2020-11-01 | 2020-11-01 | 14 |  | 项目经理（任锐媛） | 8h | 1,600 |
| 16 | 2.3 | **规划成本** |  | 3d | 2020-11-02 | 2020-11-04 |  |  |  | 24h | 4,800 |
| 17 | 2.3.1 | 项目成本估算 | manual | 1d | 2020-11-02 | 2020-11-02 |  |  | 项目经理（任锐媛） | 8h | 1,600 |
| 18 | 2.3.2 | 项目预算 | manual | 1d | 2020-11-03 | 2020-11-03 |  |  | 项目经理（任锐媛） | 8h | 1,600 |
| 19 | 2.3.3 | 形成范围基准 | manual | 1d | 2020-11-04 | 2020-11-04 |  |  | 项目经理（任锐媛） | 8h | 1,600 |
| 20 | 2.4 | **规划风险** |  | 3d | 2020-11-05 | 2020-11-07 |  |  |  | 24h | 4,800 |
| 21 | 2.4.1 | 识别风险 | manual | 1d | 2020-11-05 | 2020-11-05 |  |  | 项目经理（任锐媛） | 8h | 1,600 |
| 22 | 2.4.2 | 风险分析 | manual | 1d | 2020-11-06 | 2020-11-06 |  |  | 项目经理（任锐媛） | 8h | 1,600 |
| 23 | 2.4.3 | 制定风险手册 | manual | 1d | 2020-11-07 | 2020-11-07 |  |  | 项目经理（任锐媛） | 8h | 1,600 |
| 24 | 3 | **执行与监控** |  | 30d | 2020-11-08 | 2020-12-18 |  |  |  | 832h | 51,000 |
| 25 | 3.1 | 组件项目团队 | manual | 1d | 2020-11-08 | 2020-11-08 |  |  | 项目经理（任锐媛） | 8h | 1,600 |

| ID | WBS | Task | Type | Duration | Start | Finish | Predecessors | Resources | Work | Cost |
| --- | --- | --- | --- | --- | --- | --- | --- | --- | --- | --- |
| 26 | 3.2 | **项目执行** |  | 14d | 2020-11-09 | 2020-11-26 | 25 |  | 256h | 11,520 |
| 27 | 3.2.1 | 首页模块 | manual | 4d | 2020-11-09 | 2020-11-12 |  | 程序员1（任锐媛） | 32h | 1,440 |
| 28 | 3.2.2 | 用户模块 | manual | 2d | 2020-11-13 | 2020-11-14 |  | 程序员5（梁钰钊） | 16h | 720 |
| 29 | 3.2.3 | 笔记模块 | manual | 4d | 2020-11-15 | 2020-11-18 |  | 程序员3（田春雨）; 程序员4（于喜梅） | 64h | 2,880 |
| 30 | 3.2.4 | 发现模块 | manual | 3d | 2020-11-19 | 2020-11-21 |  | 程序员2（张硕） | 24h | 1,080 |
| 31 | 3.2.5 | 线上旅游模块 | manual | 4d | 2020-11-22 | 2020-11-25 |  | 程序员5（梁钰钊）; 程序员7（姚元玲） | 64h | 2,880 |
| 32 | 3.2.6 | 功能展示 | manual | 1d | 2020-11-26 | 2020-11-26 |  | 程序员1（任锐媛）; 程序员2（张硕）; 程序员3（田春雨）; 程序员4（于喜梅）; 程序员5（梁钰钊）; 程序员6（张杰）; 程序员7（姚元玲） | 56h | 2,520 |
| 33 | 3.3 | **项目监控** |  | 2d | 2020-11-27 | 2020-11-29 |  |  | 160h | 10,840 |
| 34 | 3.3.1 | 各项指标监控 | manual | 1d | 2020-11-27 | 2020-11-27 |  | 测试员1（姚元玲）; 测试员2（张硕）; 质量专家（梁钰钊） | 24h | 1,440 |
| 35 | 3.3.2 | 监控评审 | manual | 1d | 2020-11-28 | 2020-11-28 |  | 测试员1（姚元玲）; 测试员2（张硕）; 质量专家（梁钰钊） | 24h | 1,440 |
| 36 | 3.3.3 | 例会 | manual | 1d | 2020-11-29 | 2020-11-29 |  | UI专家（田春雨）; 测试员1（姚元玲）; 测试员2（张硕）; 程序员1（任锐媛）; 程序员2（张硕）; 程序员3（田春雨）; 程序员4（于喜梅）; 程序员5（梁钰钊）; 程序员6（张杰）; 程序员7（姚元玲）; 设计专家（张杰）; 项目经理（任锐媛）; 需求专家（于喜梅）; 质量专家（梁钰钊） | 112h | 7,960 |
| 37 | 3.4 | **团队建设** |  | 2d | 2020-11-30 | 2020-12-01 |  |  | 184h | 11,120 |
| 38 | 3.4.1 | 培训 | manual | 1d | 2020-11-30 | 2020-11-30 |  | 测试员1（姚元玲）; 测试员2（张硕）; 程序员1（任锐媛）; 程序员2（张硕）; 程序员3（田春雨）; 程序员4（于喜梅）; 程序员5（梁钰钊）; 程序员6（张杰）; 程序员7（姚元玲） | 72h | 3,160 |
| 39 | 3.4.2 | 娱乐 | manual | 1d | 2020-12-01 | 2020-12-01 |  | UI专家（田春雨）; 测试员1（姚元玲）; 测试员2（张硕）; 程序员1（任锐媛）; 程序员2（张硕）; 程序员3（田春雨）; 程序员4（于喜梅）; 程序员5（梁钰钊）; 程序员6（张杰）; 程序员7（姚元玲）; 设计专家（张杰）; 项目经理（任锐媛）; 需求专家（于喜梅）; 质量专家（梁钰钊） | 112h | 7,960 |
| 40 | 3.5 | **收尾** |  | 2d | 2020-12-02 | 2020-12-03 |  |  | 224h | 15,920 |
| 41 | 3.5.1 | 项目终验 | manual | 1d | 2020-12-02 | 2020-12-02 |  | UI专家（田春雨）; 测试员1（姚元玲）; 测试员2（张硕）; 程序员1（任锐媛）; 程序员2（张硕）; 程序员3（田春雨）; 程序员4（于喜梅）; 程序员5（梁钰钊）; 程序员6（张杰）; 程序员7（姚元玲）; 设计专家（张杰）; 项目经理（任锐媛）; 需求专家（于喜梅）; 质量专家（梁钰钊） | 112h | 7,960 |
| 42 | 3.5.2 | 项目收尾 | manual | 1d | 2020-12-03 | 2020-12-03 |  | UI专家（田春雨）; 测试员1（姚元玲）; 测试员2（张硕）; 程序员1（任锐媛）; 程序员2（张硕）; 程序员3（田春雨）; 程序员4（于喜梅）; 程序员5（梁钰钊）; 程序员6（张杰）; 程序员7（姚元玲）; 设计专家（张杰）; 项目经理（任锐媛）; 需求专家（于喜梅）; 质量专家（梁钰钊） | 112h | 7,960 |
